# Plan de Trabajo

Schedule from MS Project, 2022-03-17 to 2022-05-20, A marks actual dates.

## Calendars

- Estándar: Mon-Fri 09:00-13:00, 15:00-19:00; Sat-Sun 08:00-17:00.

## Resources

| Resource |
| --- |
| Equipo de desarrollo |
| Johan Carrillo |
| Mario Sinay |
| Jhensser Aguirre |
| Jorge Muñoz |
| Sara Ocalle |
| Sara Ovalle |
| E4 |

## Schedule

| ID | WBS | Task | Duration | Start | Finish | Predecessors | Complete | Remaining | Total slack | Resources | Work | Actual work |
| --- | --- | --- | --- | --- | --- | --- | --- | --- | --- | --- | --- | --- |
| 1 | 1 | **Proyecto de Sistema para Clinica Médica** | 67d | 2022-03-17 A | 2022-05-20 |  | 60% | 26.56d | 0d |  | 1832h | 929.72h |
| 2 | 1.1 | **Inicio** | 15.5d | 2022-03-17 A | 2022-03-31 A |  | 100% |  |  |  | 120h | 120h |
| 3 | 1.1.1 | Estudio de información de las instituciones médicas centralizadas en la historia clínica | 2d | 2022-03-17 A | 2022-03-18 A |  | 100% |  |  | Equipo de desarrollo | 16h | 16h |
| 4 | 1.1.2 | Estudio de la estructura organizacional de una clínica médica | 2d | 2022-03-17 A | 2022-03-18 A |  | 100% |  |  | Equipo de desarrollo | 16h | 16h |
| 5 | 1.1.3 | Estudio de factibilidad económico | 2d | 2022-03-17 A | 2022-03-18 A |  | 100% |  |  | Equipo de desarrollo | 16h | 16h |
| 6 | 1.1.4 | Acta de Constitución | 4d | 2022-03-21 A | 2022-03-24 A | 5 | 100% |  |  | Johan Carrillo | 32h | 32h |
| 7 | 1.1.5 | Realizar Dercas | 2d | 2022-03-25 A | 2022-03-28 A | 6 | 100% |  |  | Equipo de desarrollo | 16h | 16h |
| 8 | 1.1.6 | Reunión Inicial de Proyecto (Kick Off) | 3d | 2022-03-29 A | 2022-03-31 A | 7 | 100% |  |  | Equipo de desarrollo | 24h | 24h |
| 9 | 1.2 | **Planificación** | 20.75d | 2022-03-17 A | 2022-04-05 A |  | 100% |  |  |  | 136h | 136h |
| 10 | 1.2.1 | **Toma de Requerimientos** | 20.75d | 2022-03-17 A | 2022-04-05 A |  | 100% |  |  |  | 136h | 136h |
| 11 | 1.2.1.1 | Tomar Requerimiento Funcionales | 2d | 2022-04-01 A | 2022-04-04 A | 8 | 100% |  |  | Equipo de desarrollo | 16h | 16h |
| 12 | 1.2.1.2 | Tomar Requerimientos no Funcionales | 2d | 2022-03-17 A | 2022-03-18 A | 8 | 100% |  |  | Equipo de desarrollo | 16h | 16h |
| 13 | 1.2.1.3 | Definir Lenguaje de Programación | 1d | 2022-03-21 A | 2022-03-21 A | 12 | 100% |  |  | Equipo de desarrollo | 8h | 8h |
| 14 | 1.2.1.4 | Definir IDE a utilizar | 1d | 2022-03-17 A | 2022-03-17 A | 12 | 100% |  |  | Equipo de desarrollo | 8h | 8h |
| 15 | 1.2.1.5 | Definir Base de Datos | 1d | 2022-03-22 A | 2022-03-22 A | 13 | 100% |  |  | Johan Carrillo | 8h | 8h |
| 16 | 1.2.1.6 | Realizar Diagrama de Entidad Relación | 2d | 2022-03-23 A | 2022-03-24 A | 15 | 100% |  |  | Johan Carrillo | 16h | 16h |
| 17 | 1.2.1.7 | **Desarrollo de Diagramas UML** | 12.5d | 2022-03-25 A | 2022-04-05 A |  | 100% |  |  |  | 64h | 64h |
| 18 | 1.2.1.7.1 | Diagrama de Casos de uso | 1d | 2022-03-25 A | 2022-03-25 A | 16 | 100% |  |  | Mario Sinay | 8h | 8h |
| 19 | 1.2.1.7.2 | Diagrama de Clases | 3d | 2022-03-28 A | 2022-03-30 A | 18 | 100% |  |  | Jhensser Aguirre | 24h | 24h |
| 20 | 1.2.1.7.3 | Diagrama de Secuencias | 2d | 2022-03-31 A | 2022-04-01 A | 19 | 100% |  |  | Jorge Muñoz | 16h | 16h |
| 21 | 1.2.1.7.4 | Diagrama de Actividades | 2d | 2022-04-04 A | 2022-04-05 A | 20 | 100% |  |  | Sara Ovalle | 16h | 16h |
| 22 | 1.3 | **Ejecución** | 38.5d | 2022-03-29 A | 2022-05-05 | 9 | 65% | 13.55d | 16d |  | 1168h | 673.72h |
| 23 | 1.3.1 | Realizar Mockups | 4d | 2022-03-29 A | 2022-04-03 A | 7 | 100% |  |  | Equipo de desarrollo | 32h | 32h |
| 24 | 1.3.2 | Implementacion del ambiente para desarrollo | 1d | 2022-03-29 A | 2022-03-29 A | 7 | 100% |  |  | Equipo de desarrollo | 8h | 8h |
| 25 | 1.3.3 | Realizar la Base de Datos | 5d | 2022-03-30 A | 2022-04-05 A | 24 | 100% |  |  | Johan Carrillo | 40h | 40h |

| ID | WBS | Task | Duration | Start | Finish | Predecessors | Complete | Remaining | Total slack | Resources | Work | Actual work |
| --- | --- | --- | --- | --- | --- | --- | --- | --- | --- | --- | --- | --- |
| 26 | 1.3.4 | **Desarrollar Backend** | 18.25d | 2022-04-06 A | 2022-04-23 | 25 | 67% | 5.94d | 28d |  | 680h | 384.8h |
| 27 | 1.3.4.1 | Creacion de conexión a la base de datos | 3d | 2022-04-06 A | 2022-04-08 A | 25 | 100% |  |  | Equipo de desarrollo | 24h | 24h |
| 28 | 1.3.4.2 | Configuracion de la base de datos | 3d | 2022-04-11 A | 2022-04-13 A | 27 | 100% |  |  | Equipo de desarrollo | 24h | 24h |
| 29 | 1.3.4.3 | Implemenacion de plugin y o librerias | 1d | 2022-04-09 A | 2022-04-09 | 27 | 90% | 0.1d | 38.5d | Equipo de desarrollo | 8h | 7.2h |
| 30 | 1.3.4.4 | **Crear servicios** | 9d | 2022-04-14 A | 2022-04-22 | 28 | 62% | 3.41d | 0d | Equipo de desarrollo | 616h | 322.4h |
| 31 | 1.3.4.4.1 | Login | 3d | 2022-04-14 A | 2022-04-18 A | 28 | 100% |  |  | Johan Carrillo | 24h | 24h |
| 32 | 1.3.4.4.2 | Inicio | 3d | 2022-04-14 A | 2022-04-16 A | 28 | 100% |  |  | Johan Carrillo | 24h | 24h |
| 33 | 1.3.4.4.3 | Usuarios | 3d | 2022-04-14 A | 2022-04-16 A | 28 | 100% |  |  | Jhensser Aguirre | 24h | 24h |
| 34 | 1.3.4.4.4 | **Citas** | 8d | 2022-04-14 A | 2022-04-21 | 28 | 70% | 2.4d | 1d | Mario Sinay | 192h | 134.4h |
| 35 | 1.3.4.4.4.1 | Detalle de citas | 8d | 2022-04-14 A | 2022-04-21 |  | 70% | 2.4d | 1d | Mario Sinay | 64h | 44.8h |
| 36 | 1.3.4.4.4.2 | Sucursales | 8d | 2022-04-14 A | 2022-04-21 |  | 70% | 2.4d | 1d | Mario Sinay | 64h | 44.8h |
| 37 | 1.3.4.4.5 | **Pacientes** | 9d | 2022-04-14 | 2022-04-22 | 28 |  |  | 0d | Jorge Muñoz | 144h |  |
| 38 | 1.3.4.4.5.1 | Historial médico | 9d | 2022-04-14 | 2022-04-22 |  |  |  | 0d | Jorge Muñoz | 72h |  |
| 39 | 1.3.4.4.6 | **Empleados** | 3d | 2022-04-14 A | 2022-04-16 A | 28 | 100% |  |  | Sara Ovalle | 48h | 48h |
| 40 | 1.3.4.4.6.1 | Puestos | 3d | 2022-04-14 A | 2022-04-16 A |  | 100% |  |  | Sara Ocalle | 24h | 24h |
| 41 | 1.3.4.4.7 | Inventario y Tienda | 5d | 2022-04-14 A | 2022-04-18 | 28 | 35% | 3.25d | 4d | Johan Carrillo | 40h | 14h |
| 42 | 1.3.4.4.8 | Ramas médicas | 3d | 2022-04-14 A | 2022-04-16 A | 28 | 100% |  |  | Jhensser Aguirre; Sara Ovalle | 48h | 48h |
| 43 | 1.3.4.5 | Crear las conexiones con el frontend | 1d | 2022-04-22 A | 2022-04-23 | 30 | 90% | 0.1d | 28d | Equipo de desarrollo | 8h | 7.2h |
| 44 | 1.3.5 | **Desarrollar Frontend** | 19d | 2022-04-14 A | 2022-05-02 |  | 61% | 7.48d | 0d |  | 352h | 208.92h |
| 45 | 1.3.5.1 | **Creacion de la vistas** | 9.25d | 2022-04-14 A | 2022-04-22 |  | 78% | 2.05d | 4.75d | Equipo de desarrollo | 240h | 176.92h |
| 46 | 1.3.5.1.1 | Login | 3d | 2022-04-20 A | 2022-04-22 A | 28 | 100% |  |  | Johan Carrillo | 24h | 24h |
| 47 | 1.3.5.1.2 | Inicio | 3d | 2022-04-20 A | 2022-04-22 A | 28 | 100% |  |  | Johan Carrillo | 24h | 24h |
| 48 | 1.3.5.1.3 | Usuarios | 3d | 2022-04-14 A | 2022-04-16 A | 28 | 100% |  |  | Jhensser Aguirre | 24h | 24h |
| 49 | 1.3.5.1.4 | Citas | 5d | 2022-04-14 A | 2022-04-18 | 28 | 50% | 2.5d | 9d | Mario Sinay | 40h | 20h |
| 50 | 1.3.5.1.5 | Pacientes | 3d | 2022-04-14 A | 2022-04-16 A | 28 | 100% |  |  | Jorge Muñoz | 24h | 24h |
| 51 | 1.3.5.1.6 | Empleados | 3d | 2022-04-14 A | 2022-04-16 A | 28 | 100% |  |  | Sara Ovalle | 24h | 24h |
| 52 | 1.3.5.1.7 | Inventario y Tienda | 5d | 2022-04-14 A | 2022-04-18 | 28 | 35% | 3.25d | 9d | Johan Carrillo | 40h | 14h |
| 53 | 1.3.5.1.8 | Ramas médicas | 1d | 2022-04-14 A | 2022-04-14 A | 28 | 100% |  |  | Jhensser Aguirre; Sara Ovalle | 16h | 16h |
| 54 | 1.3.5.2 | Implementacion de los servicios | 5d | 2022-04-22 | 2022-04-27 | 30 |  |  | 0d | Equipo de desarrollo | 40h |  |
| 55 | 1.3.5.3 | Consumir los servicios del backend | 5d | 2022-04-27 | 2022-05-02 | 54, 45 |  |  | 0d | Equipo de desarrollo | 40h |  |
| 56 | 1.3.5.4 | Implementacion de un framework | 1d | 2022-04-23 A | 2022-04-27 A | 54 | 100% |  |  | Equipo de desarrollo | 8h | 8h |
| 57 | 1.3.5.5 | Consumir un framework | 3d | 2022-04-23 A | 2022-04-28 A | 54 | 100% |  |  | Equipo de desarrollo | 24h | 24h |

| ID | WBS | Task | Duration | Start | Finish | Predecessors | Total slack | Free slack | Resources | Work |
| --- | --- | --- | --- | --- | --- | --- | --- | --- | --- | --- |
| 58 | 1.3.6 | **Realizar Pruebas de Software** | 3d | 2022-05-02 | 2022-05-05 |  | 0d |  |  | 56h |
| 59 | 1.3.6.1 | **Pruebas Funcionales** | 1d | 2022-05-02 | 2022-05-03 |  | 18d |  |  | 32h |
| 60 | 1.3.6.1.1 | Pruebas Unitarias | 1d | 2022-05-02 | 2022-05-03 | 44 | 18d |  | Jhensser Aguirre | 8h |
| 61 | 1.3.6.1.2 | Pruebas de Integración | 1d | 2022-05-02 | 2022-05-03 | 44 | 18d |  | Mario Sinay; Johan Carrillo; Sara Ovalle | 24h |
| 62 | 1.3.6.2 | **Pruebas No Funcionales** | 3d | 2022-05-02 | 2022-05-05 |  | 0d |  |  | 24h |
| 63 | 1.3.6.2.1 | Performance Tesitng | 3d | 2022-05-02 | 2022-05-05 | 44 | 0d |  | Jorge Muñoz | 24h |
| 64 | 1.4 | **Monitoreo y Control** | 16d | 2022-05-05 | 2022-05-20 |  | 0d |  |  | 344h |
| 65 | 1.4.1 | **Desviaciones del Sistema** | 16d | 2022-05-05 | 2022-05-20 |  | 0d |  |  | 304h |
| 66 | 1.4.1.1 | Verificar Desviaciones del Sistema | 4d | 2022-05-05 | 2022-05-08 | 63 | 0d |  | Jhensser Aguirre | 32h |
| 67 | 1.4.1.2 | Documentar las Desviaciones del sistema | 2d | 2022-05-09 | 2022-05-10 | 66 | 0d |  | Jhensser Aguirre; Johan Carrillo | 32h |
| 68 | 1.4.1.3 | Corrección de las Desviaciones Encontradas | 10d | 2022-05-11 | 2022-05-20 | 67 | 0d |  | Jhensser Aguirre; Johan Carrillo; Mario Sinay | 240h |
| 69 | 1.4.2 | Verificación de estabilidad del sistema | 3d | 2022-05-09 | 2022-05-11 | 66 | 9d |  | Sara Ovalle | 24h |
| 70 | 1.4.3 | Test de la velocidad de respuesta del sistema | 1d | 2022-05-09 | 2022-05-09 | 66 | 4d | 0d | Jorge Muñoz | 8h |
| 71 | 1.4.4 | Correcciones en el plan de trabajo | 1d | 2022-05-10 | 2022-05-10 | 70 | 4d | 0d | Equipo de desarrollo | 8h |
| 72 | 1.5 | **Cierre** | 6d | 2022-05-11 | 2022-05-16 |  | 4d |  |  | 64h |
| 73 | 1.5.1 | Finalizar formalmente el proyecto | 3d | 2022-05-11 | 2022-05-13 | 71 | 4d | 0d | Equipo de desarrollo | 24h |
| 74 | 1.5.2 | Lecciones Aprendidas | 2d | 2022-05-14 | 2022-05-15 | 73 | 5d |  | Equipo de desarrollo | 16h |
| 75 | 1.5.3 | Acta de Cierre | 3d | 2022-05-14 | 2022-05-16 | 73 | 4d |  | Equipo de desarrollo | 24h |
